Schedule from Planner, 2008-11-20 to 2009-02-27.

## Calendars

- Default: Mon-Fri 08:00-12:00, 13:00-17:00; Sat-Sun off. Exceptions (off unless hours are given): 2008-12-31 to 2009-01-02, 2009-01-05 to 2009-01-06, 2009-01-07 08:00-12:00, 13:00-17:00, 2009-01-10 08:00-12:00, 13:00-17:00, 2009-01-28.

## Resources

| Resource |
| --- |
| Hmayak and Andranik |

## Schedule

| ID | WBS | Task | Start | Finish | Predecessors | Complete | Constraint | Work |
| --- | --- | --- | --- | --- | --- | --- | --- | --- |
| 1 | 1 | **Method Port Binding step** | 2008-11-20 | 2008-11-26 |  |  |  | 40h |
| 2 | 1.1 | Devspec | 2008-11-20 | 2008-11-20 |  | 100% |  | 8h |
| 3 | 1.2 | Prototype | 2008-11-21 | 2008-11-26 | 2 | 100% |  | 32h |
| 4 | 2 | test-suite enhancement | 2008-11-27 | 2008-11-28 | 3 | 100% |  | 16h |
| 5 | 3 | **Combinational Path** | 2008-12-01 | 2008-12-02 | 4 |  |  | 16h |
| 6 | 3.1 | Fspec | 2008-12-01 | 2008-12-01 |  | 100% |  | 4h |
| 7 | 3.2 | Devspec | 2008-12-01 | 2008-12-01 | 6 | 100% |  | 4h |
| 8 | 3.3 | Prototype | 2008-12-02 | 2008-12-02 | 7 | 100% |  | 8h |
| 9 | 4 | **Scheduling Annotation** | 2008-12-03 | 2008-12-04 | 8 |  |  | 16h |
| 10 | 4.1 | Fspec | 2008-12-03 | 2008-12-03 |  | 100% |  | 4h |
| 11 | 4.2 | Devspec | 2008-12-03 | 2008-12-03 | 10 | 100% |  | 4h |
| 12 | 4.3 | Prototype | 2008-12-04 | 2008-12-04 | 11 | 100% |  | 8h |
| 13 | 5 | **Finish** | 2008-12-05 | 2008-12-09 | 12 |  |  | 24h |
| 14 | 5.1 | Fspec | 2008-12-05 | 2008-12-05 |  | 100% |  | 4h |
| 15 | 5.2 | Devspec | 2008-12-05 | 2008-12-05 | 14 | 100% |  | 4h |
| 16 | 5.3 | Prototype | 2008-12-08 | 2008-12-09 | 15 | 100% |  | 16h |
| 17 | 6 | Implementation | 2008-12-10 | 2008-12-16 | 16 | 100% |  | 40h |
| 18 | 7 | Test-plan | 2008-12-17 | 2008-12-19 | 17 | 100% |  | 24h |
| 19 | 8 | Test implementation | 2008-12-22 | 2008-12-24 | 18 | 100% |  | 24h |
| 20 | 9 | Enhancements | 2008-12-25 | 2009-01-26 | 19 | 100% |  | 152h |
| 21 | 10 | Testing/Manual QA | 2009-01-27 | 2009-01-29 | 20 | 100% | must start on 2009-01-27 | 16h |
| 22 | 11 | Stabilization | 2009-01-30 | 2009-01-30 | 21 | 100% |  | 8h |
| 23 | 12 | Enhancements | 2009-02-02 | 2009-02-02 | 22 | 100% | must start on 2009-02-02 | 8h |
| 24 | 13 | Testing/Manual QA | 2009-02-03 | 2009-02-03 | 23 | 100% |  | 8h |
| 25 | 14 | Stabilization | 2009-02-04 | 2009-02-06 | 24 | 100% |  | 24h |
| 26 | 15 | Enhancement | 2009-02-09 | 2009-02-10 | 25 | 100% |  | 12h |
| 27 | 16 | Writing comments for class variables | 2009-02-10 | 2009-02-10 | 26 | 100% |  | 4h |
| 28 | 17 | Clock, reset, inout changes | 2009-02-11 | 2009-02-13 | 27 | 100% |  | 24h |
| 29 | 18 | Enhancements | 2009-02-16 | 2009-02-17 | 28 | 100% |  | 12h |
| 30 | 19 | Enhance wizard window expanding mechanism | 2009-02-17 | 2009-02-18 | 29 | 100% |  | 12h |
| 31 | 20 | Change the usage of the TCL list to array | 2009-02-19 | 2009-02-20 | 30 | 100% |  | 16h |
| 32 | 21 | Enhancements on Method Port Binding screen | 2009-02-23 | 2009-02-24 | 31 | 100% |  | 12h |
| 33 | 22 | Fixes/Enhancements | 2009-02-24 | 2009-02-25 | 32 | 100% |  | 12h |
| 34 | 23 | Functionality of SA screen | 2009-02-26 | 2009-02-27 | 33 | 100% |  | 16h |

Notes:
- 4: This task includes support of diff with and without / WARNING lines
- 25: Fri 06 Feb 2009, 17:45 / Fri 06 Feb 2009, 17:45
- 26: Implementing the mechanism of displaying line numbers in the Show BVI dialog.
- 32: 1. The definitions of subinterfaces will not be written in the generated / file if the "Use Existing" radio-button is selected in Subinterface section. / 2. Add a "Hide" button to hide the Port/Method/Subinterface section. / 3. Add functionality to show the number of methods/subinterfaces.
- 33: 1. Multiple clocks/resets do not receive the verilog assignments. / 2. Implement a functionality to show a hourglass during long processes.
